# Cronograma FINAL

Schedule from MS Project, 2013-01-03 to 2013-08-08, costs in R$.
Microsoft

## Calendars

- Standard: Mon-Fri 08:00-12:00, 13:00-17:00; Sat-Sun off.

## Resources

| Resource | Group | Rate |
| --- | --- | --- |
| Gerente de Administração de Banco de Dados | Gerente | 39.62 |
| Consultor de Administração de Banco de Dados | Consultor | 34.71 |
| Coordenador de Administração de Banco de Dados | Coordenador | 35.38 |
| Administrador de Banco de Dados Sênior | Administrador | 32.5 |
| Administrador de Banco de Dados Pleno | Administrador | 24.08 |
| Administrador de Banco de Dados Júnior | Administrador | 11.09 |
| Analista de Administração de Banco de Dados Sênior | Analista | 28.06 |
| Analista de Administração de Banco de Dados Pleno | Analista | 19.17 |
| Analista de Administração de Banco de Dados Júnior | Analista | 10.87 |
| Trainee de Administração de Banco de Dados | Apoio | 8.09 |
| Assistente de Administração de Banco de Dados | Apoio | 5.04 |
| Auxiliar de Administração de Banco de Dados | Apoio | 4.39 |
| Estagiário de Administração de Banco de Dados | Apoio | 3.69 |
| Gerente de Administração de Redes | Gerente | 45.39 |
| Consultor de Administração de Redes | Consultor | 24.84 |
| Coordenador de Administração de Redes | Coordenador | 25.09 |
| Administrador de Redes Sênior | Administrador | 19.72 |
| Analista de Administração de Redes Sênior | Analista | 18.45 |
| Analista de Administração de Redes Pleno | Analista | 12.73 |
| Analista de Administração de Redes Júnior | Analista | 9.01 |
| Administrador de Redes Pleno | Administrador | 13.59 |
| Administrador de Redes Júnior | Administrador | 9.68 |
| Trainee de Administração de Redes | Apoio | 7.82 |
| Assistente de Administração de Redes | Apoio | 6.23 |
| Auxiliar de Administração de Redes | Apoio | 4.45 |
| Estagiário de Administração de Redes | Apoio | 3.58 |
| Gerente de Arquitetura da Informação | Gerente | 50.19 |
| Coordenador de Arquitetura da Informação | Coordenador | 41.35 |
| Arquiteto da Informação Sênior | Analista | 35.09 |
| Arquiteto da Informação Pleno | Analista | 21.52 |
| Arquiteto da Informação Júnior | Analista | 14.23 |
| Estagiário de Arquitetura da Informação | Apoio | 5.06 |
| Gerente de Conteúdo Web | Gerente | 37.64 |
| Coordenador de Conteúdo Web | Coordenador | 22.18 |
| Analista de Conteúdo Web Sênior | Analista | 16.6 |
| Analista de Conteúdo Web Pleno | Analista | 12.01 |
| Analista de Conteúdo Web Júnior | Analista | 8.87 |
| Assistente de Conteúdo Web | Web | 6.07 |
| Auxiliar de Conteúdo Web | Web | 4.94 |
| Estagiário de Conteúdo Web | Web | 3.93 |
| Coordenador de Criação Web | Coordenador | 28.8 |
| Web Designer Sênior | Web | 19.93 |
| Web Designer Pleno | Web | 12.84 |
| Web Designer Júnior | Web | 9.49 |
| Revisor de Criação Web | Web | 9.42 |
| Webmaster Sênior | Web | 14.52 |
| Webmaster Pleno | Web | 10.77 |
| Webmaster Júnior | Web | 8.58 |
| Trainee de Criação Web | Web | 4.71 |
| Estagiário de Criação Web | Web | 3.34 |
| Diretor de E-Commerce / E-Business | Diretor | 74.69 |
| Gerente de E-Commerce / E-Business | Gerente | 37 |
| Coordenador de E-Commerce / E-Business | Coordenador | 26.59 |
| Analista de E-Commerce / E-Business Sênior | Analista | 18.45 |
| Analista de E-Commerce / E-Business Pleno | Analista | 17.26 |
| Analista de E-Commerce / E-Business Júnior | Analista | 8.66 |
| Assistente de E-Commerce / E-Business | Apoio | 4.81 |
| Auxiliar de E-Commerce / E-Business | Apoio | 3.81 |
| Estagiário de E-Commerce / E-Business | Apoio | 3.3 |
| Gerente de Negócios Web | Gerente | 35.14 |
| Coordenador de Negócios Web | Coordenador | 24.75 |
| Executivo de Contas de Negócios Web | Web | 28.12 |
| Analista de Negócios Web Sênior | Analista | 23.25 |
| Analista de Negócios Web Pleno | Analista | 15.93 |
| Analista de Negócios Web Júnior | Analista | 8.35 |
| Assistente de Negócios Web | Web | 6.77 |
| Auxiliar de Negócios Web | Web | 4.14 |
| Estagiário de Negócios Web | Web | 3.67 |
| Diretor de Processamento de Dados | Diretor | 86.58 |
| Gerente de Processamento de Dados | Gerente | 40.17 |
| Coordenador de Processamento de Dados | Coordenador | 24.08 |
| Analista de Processamento de Dados Sênior | Analista | 22.56 |
| Analista de Processamento de Dados Pleno | Analista | 15.04 |
| Analista de Processamento de Dados Júnior | Analista | 8.81 |
| Trainee de Processamento de Dados | Apoio | 7.98 |
| Assistente de Processamento de Dados | Apoio | 5.9 |
| Operador de Processamento de Dados |  | 5.64 |
| Auxiliar de Processamento de Dados | Apoio | 3.9 |
| Digitador |  | 4.12 |
| Estagiário de Processamento de Dados | Apoio | 3.47 |
| Gerente de Programação | Gerente | 41.09 |
| Coordenador de Programação | Coordenador | 26.1 |
| Analista de Programação Sênior | Analista | 26.19 |
| Analista de Programação Pleno | Analista | 16.34 |
| Analista de Programação Júnior | Analista | 9.86 |
| Programador Sênior | Programador | 15.18 |
| Programador Pleno | Programador | 11.78 |
| Programador Júnior | Programador | 9.31 |
| Trainee de Programação | Apoio | 5.87 |
| Assistente de Programação | Apoio | 5.85 |
| Auxiliar de Programação | Apoio | 4.2 |
| Estagiário de Programação | Apoio | 3.75 |
| Gerente de Qualidade de Software | Gerente | 47.48 |
| Coordenador de Qualidade de Software | Coordenador | 26.92 |
| Analista de Qualidade de Software Sênior | Analista | 20.06 |
| Analista de Qualidade de Software Pleno | Analista | 12.88 |
| Analista de Qualidade de Software Júnior | Analista | 10.22 |
| Assistente de Qualidade de Software | Apoio | 4.96 |
| Estagiário de Qualidade de Software | Apoio | 3.97 |
| Analista de Redes Sociais Júnior | Analista | 9.24 |
| Gerente de Segurança da Informação | Gerente | 45.83 |
| Consultor de Segurança da Informação | Consultor | 30.4 |
| Coordenador de Segurança da Informação | Coordenador | 29.06 |
| Analista de Segurança da Informação Sênior | Analista | 24.82 |
| Analista de Segurança da Informação Pleno | Analista | 17.1 |
| Analista de Segurança da Informação Júnior | Analista | 11.09 |
| Assistente de Segurança da Informação | Apoio | 5.65 |
| Estagiário de Segurança da Informação | Apoio | 4.82 |
| Diretor de Projetos | Diretor | 69.85 |
| Gerente de Projetos | Gerente | 44.72 |
| Consultor de Projetos | Consultor | 34.19 |
| Coordenador de Projetos | Coordenador | 34.19 |
| Analista de Requisitos Sênior | Analista | 27.24 |
| Analista de Requisitos Pleno | Analista | 18.03 |
| Analista de Requisitos Júnior | Analista | 10.2 |
| Analista de Projetos | Analista | 28.07 |
| Analista de Projetos | Analista | 18.88 |
| Analista de Projetos | Analista | 10.97 |
| Analista de Testes Sênior | Analista | 17.34 |
| Analista de Testes Pleno | Analista | 13.43 |
| Analista de Testes Júnior | Analista | 9.11 |
| Trainee de Projetos | Apoio | 7.61 |
| Assistente de Projetos | Apoio | 6.77 |
| Auxiliar de Projetos | Apoio | 4.7 |
| Estagiário de Projetos | Apoio | 4.1 |
| Diretor de Suporte Técnico em Informática - Help Desk | Diretor | 79.61 |
| Gerente de Suporte Técnico em Informática - Help Desk | Gerente | 31.86 |
| Consultor de Suporte Técnico em Informática - Help Desk | Consultor | 21.43 |
| Coordenador de Suporte Técnico em Informática - Help Desk | Coordenador | 20.02 |
| Analista de Suporte Técnico em Informática - Help Desk Sênior | Analista | 17.14 |
| Analista de Suporte Técnico em Informática - Help Desk Pleno | Analista | 10.51 |
| Analista de Suporte Técnico em Informática - Help Desk Júnior | Analista | 8.71 |
| Trainee de Suporte Técnico em Informática - Help Desk | Apoio | 6.04 |
| Técnico de Suporte Técnico em Informática - Help Desk | Apoio | 7.08 |
| Assistente de Suporte Técnico em Informática - Help Desk | Apoio | 5.46 |
| Auxiliar de Suporte Técnico em Informática - Help Desk | Apoio | 4.53 |
| Estagiário de Suporte Técnico em Informática - Help Desk | Apoio | 3.69 |
| Diretor de Tecnologia da Informação | Diretor | 84.6 |
| Gerente de Tecnologia da Informação | Gerente | 45.75 |
| Consultor de Tecnologia da Informação | Consultor | 35.71 |
| Coordenador de Tecnologia da Informação | Coordenador | 27.46 |
| Analista de Tecnologia da Informação Sênior | Analista | 26.25 |
| Analista de Tecnologia da Informação Pleno | Analista | 15.5 |
| Analista de Tecnologia da Informação Júnior | Analista | 9.6 |
| Trainee de Tecnologia da Informação | Apoio | 6.97 |
| Assistente de Tecnologia da Informação | Apoio | 5.7 |
| Auxiliar de Tecnologia da Informação | Apoio | 4.91 |
| Estagiário de Tecnologia da Informação | Apoio | 3.68 |
| Gerente de Web Development | Gerente | 30.28 |
| Coordenador de Web Development | Coordenador | 24.4 |
| Analista de Web Development Sênior | Analista | 24.63 |
| Analista de Web Development Pleno | Analista | 14.25 |
| Analista de Web Development Júnior | Analista | 9.01 |
| Trainee de Web Development | Web | 9.9 |
| Assistente de Web Development | Web | 8.68 |
| Auxiliar de Web Development | Web | 4.25 |
| Estagiário de Web Development | Web | 2.87 |
| Cliente |  |  |
| Tablet A | Equipamento | 150 |
| Tablet B | Equipamento | 200 |
| Servidor | Equipamento | 5000 |
| Apostila Treinamento | Material | 25 |
| Analista de RH | Analista | 15 |

## Schedule

| ID | WBS | Task | Type | Duration | Start | Finish | Predecessors | Total slack | Free slack | Resources | Work | Cost | Text1 |
| --- | --- | --- | --- | --- | --- | --- | --- | --- | --- | --- | --- | --- | --- |
| 1 | 1 | **Implantação da Automação de Venda** |  | 155.6d | 2013-01-03 | 2013-08-08 |  | 0d |  | Analista de Negócios Web Sênior; Cliente; Gerente de Projetos | 6800.97h | 202,482.22 | Projeto |
| 2 | 1.1 | Início do Projeto | milestone | 0d | 2013-01-03 | 2013-01-03 |  | 132.03d |  |  |  |  | Projeto |
| 3 | 1.2 | **Planejamento Detalhado** |  | 36.2d | 2013-01-03 | 2013-02-22 |  | 0d |  |  | 488h | 19,757.58 | Planejamento |
| 4 | 1.2.1 | Reunir com Usuários |  | 0.86d | 2013-01-03 | 2013-01-03 |  | 0d |  | Analista de Negócios Web Sênior; Analista de Requisitos Pleno; Cliente; Gerente de Projetos [50%] | 24h | 436.39 | Planejamento |
| 5 | 1.2.2 | Definir Escopo/Especificação Funcional |  | 4.2d | 2013-01-03 | 2013-01-10 | 4 | 0d |  | Analista de Negócios Web Sênior; Analista de Requisitos Pleno; Gerente de Projetos [50%] | 84h | 2,138.3 | Planejamento |
| 6 | 1.2.3 | Aprovar Especificação Funcional |  | 0.71d | 2013-01-10 | 2013-01-10 | 5 | 0d |  | Analista de Negócios Web Sênior; Gerente de Projetos; Coordenador de Projetos; Cliente | 20h | 456 | Planejamento |
| 7 | 1.2.4 | Adequar Especificação |  | 1.33d | 2013-01-10 | 2013-01-14 | 6 | 0d |  | Analista de Negócios Web Sênior; Coordenador de Projetos; Analista de Requisitos Pleno | 32h | 805.01 | Planejamento |
| 8 | 1.2.5 | Definição de Hardware e Software |  | 1.67d | 2013-01-14 | 2013-01-15 | 7 | 0d |  | Gerente de Projetos [50%]; Coordenador de Projetos; Analista de Administração de Banco de Dados Pleno [50%]; Analista de Requisitos Pleno [50%]; Analista de Qualidade de Software Pleno; Analista de Negócios Web Pleno | 40h | 966.13 | Planejamento |
| 9 | 1.2.6 | Elaborar Cronograma Detalhado |  | 1.43d | 2013-01-15 | 2013-01-17 | 8 | 119.4d | 0d | Analista de Negócios Web Sênior; Analista de Requisitos Pleno; Gerente de Projetos; Coordenador de Projetos | 40h | 1,118.06 | Planejamento |
| 10 | 1.2.7 | Elaborar Plano do Projeto |  | 6d | 2013-01-17 | 2013-01-25 | 9 | 119.4d | 0d | Gerente de Projetos; Coordenador de Projetos | 96h | 3,787.68 | Planejamento |
| 11 | 1.2.8 | Aprovar para Construção |  | 1d | 2013-01-25 | 2013-01-28 | 10, 9, 7 | 119.4d | 0d | Analista de Negócios Web Sênior; Gerente de Projetos; Coordenador de Projetos; Cliente | 32h | 817.28 | Planejamento |
| 12 | 1.2.9 | Construção aprovada | milestone | 0d | 2013-01-28 | 2013-01-28 | 11 | 119.4d | 0d |  |  |  | Planejamento |
| 13 | 1.2.10 | Aprovar aquisição de Hardware e Software |  | 1d | 2013-01-28 | 2013-01-29 | 12 | 119.4d | 0d | Analista de Negócios Web Sênior; Gerente de Projetos; Coordenador de Projetos; Cliente | 32h | 817.28 | Planejamento |
| 14 | 1.2.11 | Aquisição do Hardware e Software |  | 15d | 2013-01-29 | 2013-02-19 | 13 | 119.4d | 0d | Coordenador de Projetos [20%]; Tablet A [400%]; Tablet B [200%]; Servidor | 24h | 6,820.56 | Planejamento |
| 15 | 1.2.12 | Instalação e Preparação do Hardware |  | 3d | 2013-02-19 | 2013-02-22 | 14 | 119.4d | 0d | Coordenador de Projetos [50%]; Analista de Testes Pleno [50%]; Analista de Programação Pleno | 48h | 963.6 | Planejamento |
| 16 | 1.2.13 | Infraestrutura (Hardware e Software) instalada | milestone | 0d | 2013-02-22 | 2013-02-22 | 13, 15 | 119.4d |  |  |  |  | Planejamento |
| 17 | 1.2.14 | Elaborar Project Charter |  | 1d | 2013-01-28 | 2013-01-29 | 12 | 137.4d |  | Gerente de Projetos; Coordenador de Projetos | 16h | 631.28 | Planejamento |
| 18 | 1.3 | **Construção** |  | 130.21d | 2013-01-15 | 2013-07-16 |  | 0d |  |  | 2201.12h | 89,476.03 | Construção |
| 19 | 1.3.1 | Elaborar Plano de Testes |  | 3d | 2013-01-28 | 2013-01-31 | 12 | 126.4d | 0d | Coordenador de Projetos [75%]; Analista de Requisitos Pleno [75%]; Analista de Testes Sênior [75%]; Analista de Qualidade de Software Pleno [75%] | 72h | 1,483.92 | Construção |
| 20 | 1.3.2 | **Especificação Técnica** |  | 8d | 2013-01-31 | 2013-02-12 |  | 126.4d |  |  | 148h | 3,024.44 | Construção |
| 21 | 1.3.2.1 | Criar modelo de arquitetura |  | 2d | 2013-01-31 | 2013-02-04 | 12, 19 | 126.4d | 0d | Arquiteto da Informação Pleno; Analista de Requisitos Pleno; Coordenador de Projetos [50%] | 40h | 906.32 | Construção |
| 22 | 1.3.2.2 | Criar modelo de casos de uso |  | 3d | 2013-02-04 | 2013-02-07 | 21 | 126.4d | 0d | Analista de Requisitos Pleno; Coordenador de Projetos [50%]; Analista de Negócios Web Pleno | 60h | 1,225.32 | Construção |
| 23 | 1.3.2.3 | Criar modelo de dados |  | 3d | 2013-02-07 | 2013-02-12 | 22 | 126.4d | 0d | Analista de Requisitos Pleno; Analista de Administração de Banco de Dados Pleno | 48h | 892.8 | Construção |
| 24 | 1.3.3 | Aprovar Especificação Técnica |  | 1d | 2013-02-12 | 2013-02-13 | 21, 22, 23 | 126.4d | 0d | Coordenador de Projetos; Analista de Qualidade de Software Pleno; Analista de Testes Pleno [50%]; Gerente de Projetos [50%] | 24h | 609.16 | Construção |
| 25 | 1.3.4 | Especificação Técnica Aprovada | milestone | 0d | 2013-02-13 | 2013-02-13 | 24 | 126.4d |  |  |  |  | Construção |

| ID | WBS | Task | Type | Duration | Start | Finish | Predecessors | Total slack | Resources | Work | Cost | Text1 |
| --- | --- | --- | --- | --- | --- | --- | --- | --- | --- | --- | --- | --- |
| 26 | 1.3.5 | **Desenvolvimento** |  | 120.21d | 2013-01-15 | 2013-07-02 |  | 0d |  | 1605.12h | 70,772.76 | Construção |
| 27 | 1.3.5.1 | Aquisição do Hardware e Software |  | 30d | 2013-01-15 | 2013-02-26 | 8 | 0d | Tablet A [24700%]; Tablet B [2000%] |  | 41,050 | Construção |
| 28 | 1.3.5.2 | Instalação e Preparação do Hardware |  | 10d | 2013-02-26 | 2013-03-12 | 27 | 0d | Coordenador de Projetos [50%]; Analista de Testes Pleno [50%]; Analista de Programação Pleno | 160h | 3,212 | Construção |
| 29 | 1.3.5.3 | Infraestrutura (Hardware e Software) instalada | milestone | 0d | 2013-03-12 | 2013-03-12 | 28 | 0d |  |  |  | Construção |
| 30 | 1.3.5.4 | **Sistema de Banco de Dados** |  | 7d | 2013-03-12 | 2013-03-21 |  | 0d |  | 88h | 1,767.33 | Construção |
| 31 | 1.3.5.4.1 | Implementar modelo de dados |  | 5d | 2013-03-12 | 2013-03-19 | 29 | 0d | Analista de Administração de Banco de Dados Pleno | 40h | 766.8 | Construção |
| 32 | 1.3.5.4.2 | Validar modelo de dados |  | 2d | 2013-03-19 | 2013-03-21 | 31 | 0d | Coordenador de Projetos [85.7%]; Analista de Qualidade de Software Pleno [85.7%]; Analista de Testes Pleno [42.9%]; Analista de Administração de Banco de Dados Pleno [85.7%] | 48h | 1,000.53 | Construção |
| 33 | 1.3.5.4.3 | Modelo de dados aprovado | milestone | 0d | 2013-03-21 | 2013-03-21 | 32 | 0d |  |  |  | Construção |
| 34 | 1.3.5.5 | **Sistema de Interface** |  | 73.21d | 2013-03-21 | 2013-07-02 |  | 0d |  | 1357.12h | 24,743.44 | Construção |
| 35 | 1.3.5.5.1 | **Módulo 01 - Acesso** |  | 7.21d | 2013-03-21 | 2013-04-01 |  | 0d |  | 124h | 2,313.21 | Construção |
| 36 | 1.3.5.5.1.1 | Construção do layout |  | 2d | 2013-03-21 | 2013-03-25 | 33 | 0d | Web Designer Pleno; Analista de Requisitos Pleno; Analista de Negócios Web Sênior [50%]; Analista de Qualidade de Software Pleno [50%] | 48h | 782.96 | Construção |
| 37 | 1.3.5.5.1.2 | Aprovação do layout |  | 0.71d | 2013-03-25 | 2013-03-26 | 36 | 0d | Analista de Negócios Web Sênior; Coordenador de Projetos; Gerente de Projetos; Cliente | 20h | 517.4 | Construção |
| 38 | 1.3.5.5.1.3 | Programação |  | 2d | 2013-03-26 | 2013-03-28 | 37 | 0d | Analista de Programação Pleno; Analista de Qualidade de Software Pleno [50%] | 24h | 364.48 | Construção |
| 39 | 1.3.5.5.1.4 | Testes Modulares |  | 1d | 2013-03-28 | 2013-03-29 | 38 | 0d | Analista de Programação Pleno [66.7%]; Analista de Qualidade de Software Pleno [66.7%]; Analista de Testes Pleno [66.7%] | 16h | 227.47 | Construção |
| 40 | 1.3.5.5.1.5 | Aprovação do módulo |  | 1d | 2013-03-29 | 2013-04-01 | 39 | 0d | Coordenador de Projetos [66.7%]; Analista de Qualidade de Software Pleno [33.3%]; Gerente de Projetos [33.3%]; Analista de Negócios Web Pleno [66.7%] | 16h | 420.91 | Construção |
| 41 | 1.3.5.5.1.6 | Módulo 01 - Acesso aprovado | milestone | 0d | 2013-04-01 | 2013-04-01 | 40 | 0d |  |  |  | Construção |
| 42 | 1.3.5.5.2 | **Módulo 02 - Pesquisa** |  | 11d | 2013-04-01 | 2013-04-16 |  | 0d |  | 200.16h | 3,598.6 | Construção |
| 43 | 1.3.5.5.2.1 | Construção do layout |  | 3d | 2013-04-01 | 2013-04-04 | 41 | 0d | Web Designer Pleno; Analista de Requisitos Pleno; Analista de Negócios Web Sênior [50%]; Analista de Qualidade de Software Pleno [50%] | 72h | 1,174.44 | Construção |
| 44 | 1.3.5.5.2.2 | Aprovação do layout |  | 1d | 2013-04-04 | 2013-04-05 | 43 | 0d | Analista de Negócios Web Sênior; Coordenador de Projetos; Gerente de Projetos; Cliente | 32h | 817.28 | Construção |
| 45 | 1.3.5.5.2.3 | Programação |  | 4d | 2013-04-05 | 2013-04-11 | 44 | 0d | Analista de Programação Pleno; Analista de Qualidade de Software Pleno [50%] | 48h | 728.96 | Construção |
| 46 | 1.3.5.5.2.4 | Testes Modulares |  | 2d | 2013-04-11 | 2013-04-15 | 45 | 0d | Analista de Programação Pleno [67%]; Analista de Qualidade de Software Pleno [67%]; Analista de Testes Pleno [67%] | 32.16h | 457.21 | Construção |
| 47 | 1.3.5.5.2.5 | Aprovação do módulo |  | 1d | 2013-04-15 | 2013-04-16 | 46 | 0d | Coordenador de Projetos [67%]; Analista de Qualidade de Software Pleno [33%]; Gerente de Projetos [33%]; Analista de Negócios Web Pleno [67%] | 16h | 420.71 | Construção |
| 48 | 1.3.5.5.2.6 | Módulo 02 - Pesquisa aprovado | milestone | 0d | 2013-04-16 | 2013-04-16 | 47 | 0d |  |  |  | Construção |
| 49 | 1.3.5.5.3 | **Módulo 03 - Pedido** |  | 15d | 2013-04-16 | 2013-05-07 |  | 0d |  | 248.16h | 4,327.56 | Construção |
| 50 | 1.3.5.5.3.1 | Construção do layout |  | 3d | 2013-04-16 | 2013-04-19 | 48 | 0d | Web Designer Pleno; Analista de Requisitos Pleno; Analista de Negócios Web Sênior [50%]; Analista de Qualidade de Software Pleno [50%] | 72h | 1,174.44 | Construção |
| 51 | 1.3.5.5.3.2 | Aprovação do layout |  | 1d | 2013-04-19 | 2013-04-22 | 50 | 0d | Analista de Negócios Web Sênior; Coordenador de Projetos; Gerente de Projetos; Cliente | 32h | 817.28 | Construção |
| 52 | 1.3.5.5.3.3 | Programação |  | 8d | 2013-04-22 | 2013-05-02 | 51 | 0d | Analista de Programação Pleno; Analista de Qualidade de Software Pleno [50%] | 96h | 1,457.92 | Construção |
| 53 | 1.3.5.5.3.4 | Testes Modulares |  | 2d | 2013-05-02 | 2013-05-06 | 52 | 0d | Analista de Programação Pleno [67%]; Analista de Qualidade de Software Pleno [67%]; Analista de Testes Pleno [67%] | 32.16h | 457.21 | Construção |
| 54 | 1.3.5.5.3.5 | Aprovação do módulo |  | 1d | 2013-05-06 | 2013-05-07 | 53 | 0d | Coordenador de Projetos [67%]; Analista de Qualidade de Software Pleno [33%]; Gerente de Projetos [33%]; Analista de Negócios Web Pleno [67%] | 16h | 420.71 | Construção |
| 55 | 1.3.5.5.3.6 | Módulo 03 - Pedido aprovado | milestone | 0d | 2013-05-07 | 2013-05-07 | 54 | 0d |  |  |  | Construção |

| ID | WBS | Task | Type | Duration | Start | Finish | Predecessors | Total slack | Resources | Work | Cost | Text1 |
| --- | --- | --- | --- | --- | --- | --- | --- | --- | --- | --- | --- | --- |
| 56 | 1.3.5.5.4 | **Módulo 04 - Estatística (BI)** |  | 12d | 2013-05-07 | 2013-05-23 |  | 0d |  | 212.16h | 3,780.84 | Construção |
| 57 | 1.3.5.5.4.1 | Construção do layout |  | 3d | 2013-05-07 | 2013-05-10 | 55 | 0d | Web Designer Pleno; Analista de Requisitos Pleno; Analista de Negócios Web Sênior [50%]; Analista de Qualidade de Software Pleno [50%] | 72h | 1,174.44 | Construção |
| 58 | 1.3.5.5.4.2 | Aprovação do layout |  | 1d | 2013-05-10 | 2013-05-13 | 57 | 0d | Analista de Negócios Web Sênior; Coordenador de Projetos; Gerente de Projetos; Cliente | 32h | 817.28 | Construção |
| 59 | 1.3.5.5.4.3 | Programação |  | 5d | 2013-05-13 | 2013-05-20 | 58 | 0d | Analista de Programação Pleno; Analista de Qualidade de Software Pleno [50%] | 60h | 911.2 | Construção |
| 60 | 1.3.5.5.4.4 | Testes Modulares |  | 2d | 2013-05-20 | 2013-05-22 | 59 | 0d | Analista de Programação Pleno [67%]; Analista de Qualidade de Software Pleno [67%]; Analista de Testes Pleno [67%] | 32.16h | 457.21 | Construção |
| 61 | 1.3.5.5.4.5 | Aprovação do módulo |  | 1d | 2013-05-22 | 2013-05-23 | 60 | 0d | Coordenador de Projetos [67%]; Analista de Qualidade de Software Pleno [33%]; Gerente de Projetos [33%]; Analista de Negócios Web Pleno [67%] | 16h | 420.71 | Construção |
| 62 | 1.3.5.5.4.6 | Módulo 04 - Estatística (BI) aprovado | milestone | 0d | 2013-05-23 | 2013-05-23 | 61 | 0d |  |  |  | Construção |
| 63 | 1.3.5.5.5 | **Módulo 05 - Enquete** |  | 10d | 2013-05-23 | 2013-06-06 |  | 0d |  | 164.16h | 3,024.88 | Construção |
| 64 | 1.3.5.5.5.1 | Construção do layout |  | 2d | 2013-05-23 | 2013-05-27 | 62 | 0d | Web Designer Pleno; Analista de Requisitos Pleno; Analista de Negócios Web Sênior [50%]; Analista de Qualidade de Software Pleno [50%] | 48h | 782.96 | Construção |
| 65 | 1.3.5.5.5.2 | Aprovação do layout |  | 1d | 2013-05-27 | 2013-05-28 | 64 | 0d | Analista de Negócios Web Sênior; Coordenador de Projetos; Gerente de Projetos; Cliente | 32h | 817.28 | Construção |
| 66 | 1.3.5.5.5.3 | Programação |  | 3d | 2013-05-28 | 2013-05-31 | 65 | 0d | Analista de Programação Pleno; Analista de Qualidade de Software Pleno [50%] | 36h | 546.72 | Construção |
| 67 | 1.3.5.5.5.4 | Testes Modulares |  | 2d | 2013-05-31 | 2013-06-04 | 66 | 0d | Analista de Programação Pleno [67%]; Analista de Qualidade de Software Pleno [67%]; Analista de Testes Pleno [67%] | 32.16h | 457.21 | Construção |
| 68 | 1.3.5.5.5.5 | Aprovação do módulo |  | 1d | 2013-06-04 | 2013-06-05 | 67 | 0d | Coordenador de Projetos [67%]; Analista de Qualidade de Software Pleno [33%]; Gerente de Projetos [33%]; Analista de Negócios Web Pleno [67%] | 16h | 420.71 | Construção |
| 69 | 1.3.5.5.5.6 | Módulo 05 - Enquete aprovado |  | 1d | 2013-06-05 | 2013-06-06 | 68 | 0d |  |  |  | Construção |
| 70 | 1.3.5.5.6 | **Módulo 06 - KPI´s** |  | 11d | 2013-06-06 | 2013-06-21 |  | 0d |  | 180.48h | 3,416.6 | Construção |
| 71 | 1.3.5.5.6.1 | Especificação dos Relatórios |  | 2d | 2013-06-06 | 2013-06-10 | 69 | 0d | Analista de Negócios Web Sênior [56%]; Analista de Requisitos Pleno [28%]; Gerente de Projetos [56%]; Cliente [56%]; Coordenador de Projetos [56%] | 40.32h | 996.13 | Construção |
| 72 | 1.3.5.5.6.2 | Aprovação dos Relatórios |  | 1d | 2013-06-10 | 2013-06-11 | 71 | 0d | Coordenador de Projetos; Analista de Qualidade de Software Pleno [50%]; Gerente de Projetos [50%]; Analista de Negócios Web Pleno; Cliente | 32h | 631.36 | Construção |
| 73 | 1.3.5.5.6.3 | Programação |  | 5d | 2013-06-11 | 2013-06-18 | 72 | 0d | Analista de Programação Pleno; Analista de Qualidade de Software Pleno [50%] | 60h | 911.2 | Construção |
| 74 | 1.3.5.5.6.4 | Testes Modulares |  | 2d | 2013-06-18 | 2013-06-20 | 73 | 0d | Analista de Programação Pleno [67%]; Analista de Qualidade de Software Pleno [67%]; Analista de Testes Pleno [67%] | 32.16h | 457.21 | Construção |
| 75 | 1.3.5.5.6.5 | Aprovação do módulo |  | 1d | 2013-06-20 | 2013-06-21 | 74 | 0d | Coordenador de Projetos [67%]; Analista de Qualidade de Software Pleno [33%]; Gerente de Projetos [33%]; Analista de Negócios Web Pleno [67%] | 16h | 420.71 | Construção |
| 76 | 1.3.5.5.6.6 | Módulo 06 - KPI´s aprovado | milestone | 0d | 2013-06-21 | 2013-06-21 | 75 | 0d |  |  |  | Construção |
| 77 | 1.3.5.5.7 | Testes Integrados |  | 5d | 2013-06-21 | 2013-06-28 | 69, 62, 55, 48, 41, 76 | 0d | Analista de Qualidade de Software Pleno [50%]; Analista de Negócios Web Pleno [50%]; Analista de Programação Pleno; Analista de Testes Pleno; Coordenador de Projetos [50%] | 140h | 2,450.8 | Construção |
| 78 | 1.3.5.5.8 | Aprovação dos Testes Integrados |  | 2d | 2013-06-28 | 2013-07-02 | 77 | 0d | Gerente de Projetos; Coordenador de Projetos; Analista de Testes Pleno [50%]; Analista de Qualidade de Software Pleno; Analista de Negócios Web Pleno; Cliente | 88h | 1,830.96 | Construção |
| 79 | 1.3.5.5.9 | Produto desenvolvido | milestone | 0d | 2013-07-02 | 2013-07-02 | 78 | 0d |  |  |  | Construção |
| 80 | 1.3.6 | Elaborar Material de Treinamento |  | 10d | 2013-07-02 | 2013-07-16 | 79 | 16.62d | Analista de RH; Analista de Negócios Web Pleno; Coordenador de Projetos [50%]; Apostila Treinamento [26000%] | 200h | 10,342 | Homologação |

| ID | WBS | Task | Type | Duration | Start | Finish | Predecessors | Total slack | Resources | Work | Cost | Text1 |
| --- | --- | --- | --- | --- | --- | --- | --- | --- | --- | --- | --- | --- |
| 81 | 1.3.7 | **Homologação** |  | 5.29d | 2013-07-02 | 2013-07-10 |  | 0d |  | 152h | 3,243.75 | Construção |
| 82 | 1.3.7.1 | Testar Sistema |  | 4.29d | 2013-07-02 | 2013-07-09 | 79 | 0d | Analista de Negócios Web Pleno; Coordenador de Projetos; Cliente; Gerente de Projetos [50%] | 120h | 2,485.03 | Homologação |
| 83 | 1.3.7.2 | Produto homologado | milestone | 0d | 2013-07-09 | 2013-07-09 | 82 | 0d |  |  |  | Homologação |
| 84 | 1.3.7.3 | Aprovar implantação |  | 1d | 2013-07-09 | 2013-07-10 | 83 | 0d | Coordenador de Projetos; Gerente de Projetos; Cliente; Analista de Negócios Web Pleno | 32h | 758.72 | Homologação |
| 85 | 1.4 | **Implantação** |  | 15.33d | 2013-07-10 | 2013-07-31 |  | 0d |  | 225.33h | 5,106.63 | Implantação |
| 86 | 1.4.1 | Elaborar Plano de Implantação |  | 5.33d | 2013-07-10 | 2013-07-17 | 84 | 0d | Coordenador de Projetos; Gerente de Projetos [50%]; Analista de Negócios Web Pleno; Analista de Qualidade de Software Pleno [50%] | 85.33h | 2,298.03 | Implantação |
| 87 | 1.4.2 | Executar Plano de Implantação |  | 5d | 2013-07-17 | 2013-07-24 | 86 | 0d | Analista de Negócios Web Pleno [50%]; Analista de Programação Pleno; Coordenador de Projetos [50%] | 80h | 1,656 | Implantação |
| 88 | 1.4.3 | Treinar Usuário |  | 5d | 2013-07-24 | 2013-07-31 | 87 | 0d | Analista de Negócios Web Pleno [60%]; Coordenador de Projetos [30%]; Analista de RH [60%] | 60h | 1,152.6 | Implantação |
| 89 | 1.4.4 | Produto implantado | milestone | 0d | 2013-07-31 | 2013-07-31 | 87, 88 | 0d |  |  |  | Implantação |
| 90 | 1.5 | Estabilizar Mudança |  | 5d | 2013-07-31 | 2013-08-07 | 89 | 0d | Analista de Negócios Web Pleno; Analista de Administração de Banco de Dados Pleno; Coordenador de Projetos | 120h | 2,771.6 | Implantação |
| 91 | 1.6 | Término do Projeto |  | 1d | 2013-08-07 | 2013-08-08 | 90 | 0d | Cliente; Coordenador de Projetos; Gerente de Projetos; Analista de Negócios Web Pleno | 32h | 758.72 | Encerramento |
| 92 | 1.7 | Projeto Finalizado | milestone | 0d | 2013-08-08 | 2013-08-08 | 91 | 0d |  |  |  | Encerramento |
